# eDMS_ProjectPlan_local

Schedule from MS Project, 2024-12-01 to 2025-03-19, status date 2024-12-01, A marks actual dates.
E-DMS
Square InformatiX Limited

## Calendars

- Standard: Mon-Thu 08:00-12:00, 13:00-17:00; Fri-Sat off; Sun 08:30-17:30. Exceptions (off unless hours are given): 2024-12-16 (Leave, recurring), 2024-12-25 (Leave, recurring).

## Resources

| Resource |
| --- |
| Mir Sadequr Rahman |
| TGCL |

## Schedule

| ID | WBS | Task | Type | Duration | Start | Finish | Predecessors | Complete | Remaining | Total slack | Free slack | Constraint | Resources | Work | Actual work |
| --- | --- | --- | --- | --- | --- | --- | --- | --- | --- | --- | --- | --- | --- | --- | --- |
| 1 | 1 | **Electronic Document Management System (E-DMS)** |  | 79d | 2024-12-01 A | 2025-03-19 |  | 3% | 76.95d |  |  |  |  | 952h | 24.5h |
| 2 | 1.1 | Feasibility Study of Microservices Architecture | manual | 5d | 2024-12-01 A | 2024-12-05 |  | 23% | 3.88d |  |  |  | Mir Sadequr Rahman | 40h | 9h |
| 3 | 1.2 | System Study & Analysis | manual | 2d | 2024-12-08 | 2024-12-09 | 2 |  |  |  |  | start no earlier than 2024-12-08 | Mir Sadequr Rahman | 16h |  |
| 4 | 1.3 | **System Design** |  | 26.69d? | 2024-12-01 | 2025-01-07 | 3 |  |  |  |  |  |  | 224h |  |
| 5 | 1.3.1 | Prototype |  | 11d | 2024-12-10 | 2024-12-26 |  |  |  | 60.38d |  | start no earlier than 2024-12-10 | Mir Sadequr Rahman | 88h |  |
| 6 | 1.3.2 | Database Sql Server |  | 5d | 2024-12-29 | 2025-01-02 |  |  |  | 54.19d | 0.25d | start no earlier than 2024-12-29 | Mir Sadequr Rahman | 40h |  |
| 7 | 1.3.3 | Ftp Server |  | 1d | 2025-01-05 | 2025-01-05 | 6 |  |  | 54.25d |  | finish no earlier than 2025-01-05 | Mir Sadequr Rahman | 8h |  |
| 8 | 1.3.4 | **Solution Architecture** |  | 26.69d? | 2024-12-01 | 2025-01-07 |  |  |  |  |  |  |  | 88h |  |
| 9 | 1.3.4.1 | **Api** |  | 1d? | 2024-12-01 | 2024-12-01 |  |  |  |  |  |  |  | 48h |  |
| 10 | 1.3.4.1.1 | Api Service Microservice Architecture C# | manual | 5d | 2025-01-06 | 2025-01-12 |  |  |  |  |  |  | Mir Sadequr Rahman | 40h |  |
| 11 | 1.3.4.1.2 | Api Service Python/Llama |  | 1d | 2025-01-19 | 2025-01-19 |  |  |  | 43.69d |  | finish no earlier than 2025-01-19 | TGCL | 8h |  |
| 12 | 1.3.4.2 | React UI | manual | 5d | 2025-01-06 | 2025-01-12 |  |  |  |  |  |  | TGCL | 40h |  |
| 13 | 1.4 | **Development** |  | 1d | 2024-12-01 | 2024-12-01 |  |  |  |  |  |  |  | 640h |  |
| 14 | 1.4.1 | **Security Access** |  | 1d? | 2024-12-01 | 2024-12-01 |  |  |  |  |  |  |  | 160h |  |
| 15 | 1.4.1.1 | UI |  | 10d | 2025-01-13 | 2025-01-26 |  |  |  | 38.75d |  | start no earlier than 2025-01-13 | TGCL | 80h |  |
| 16 | 1.4.1.2 | Api |  | 10d | 2025-01-13 | 2025-01-26 |  |  |  | 38.75d |  | start no earlier than 2025-01-13 | Mir Sadequr Rahman | 80h |  |
| 17 | 1.4.2 | **Document** |  | 1d? | 2024-12-01 | 2024-12-01 |  |  |  |  |  |  |  | 240h |  |
| 18 | 1.4.2.1 | UI |  | 15d | 2025-02-27 | 2025-03-19 |  |  |  | 0.31d |  | start no earlier than 2025-02-27 | TGCL | 120h |  |
| 19 | 1.4.2.2 | Api |  | 15d | 2025-02-27 | 2025-03-19 |  |  |  | 0.31d |  | start no earlier than 2025-02-27 | Mir Sadequr Rahman | 120h |  |
| 20 | 1.4.3 | **Workflow** |  | 1d? | 2024-12-01 | 2024-12-01 |  |  |  |  |  |  |  | 240h |  |
| 21 | 1.4.3.1 | UI |  | 15d | 2025-02-20 | 2025-03-12 |  |  |  | 5.12d |  | start no earlier than 2025-02-20 | TGCL | 120h |  |
| 22 | 1.4.3.2 | Api |  | 15d | 2025-02-20 | 2025-03-12 |  |  |  | 5.12d |  | start no earlier than 2025-02-20 | Mir Sadequr Rahman | 120h |  |
| 23 | 1.5 | Testing & Debugging |  | 2d | 2025-03-13 A | 2025-03-16 |  | 50% | 1d | 3.06d |  |  | Mir Sadequr Rahman; TGCL | 24h | 8h |
| 24 | 1.6 | Deployment |  | 1d | 2025-03-17 A | 2025-03-18 |  | 94% | 0.06d | 1.94d |  |  | Mir Sadequr Rahman | 8h | 7.5h |
